# Интеграция 1С: УИД в 1С:УПП

Schedule from MS Project, 2021-09-06 to 2022-01-28, costs in ₽, A marks actual dates.
SPecialiST RePack

## Calendars

- Стандартный: Mon-Fri 09:00-13:00, 14:00-18:00; Sat-Sun off.

## Resources

| Resource | Unit | Rate | Cost per use |
| --- | --- | --- | --- |
| Информация | информация |  |  |
| Разработчик |  | 350 |  |
| ПО: 1С: УПП | руб. |  | 480000 |
| ПО: 1С: УИД | руб. |  | 120000 |
| Аренда офиса | руб/мес. |  | 50000 |
| Техническое оборудование |  | 2000 | 750000 |
| Связь, интернет |  | 500 | 1000 |
| Персонал предпрития |  | 180 |  |
| Директор предприятия |  | 280 |  |
| Системный аналитик |  |  |  |
| Тестировщик |  |  |  |
| CAD-система | руб. |  |  |

## Schedule

| ID | WBS | Task | Type | Duration | Start | Finish | Predecessors | Complete | Remaining | Actual finish | Baseline start | Baseline finish | Baseline duration | Total slack | Constraint | Resources | Work | Actual work | Cost | Actual cost |
| --- | --- | --- | --- | --- | --- | --- | --- | --- | --- | --- | --- | --- | --- | --- | --- | --- | --- | --- | --- | --- |
| 1 | 1 | **Исследование предметной области** |  | 10.5d | 2021-09-06 A | 2021-09-20 A |  | 100% |  |  | 2021-09-06 | 2021-09-21 | 12d |  |  |  | 60h | 60h | 20,320 | 20,320 |
| 2 | 1.1 | Сбор, анализ данных автоматизированного объекта ИС | manual | 3d | 2021-09-06 A | 2021-09-08 A |  | 100% |  |  | 2021-09-06 | 2021-09-13 | 6d |  |  | Информация [1 информация]; Персонал предпрития [20%]; Разработчик | 24h | 24h | 7,720 | 7,720 |
| 3 | 1.2 | Сравнительная характеристика аналогичных решений | manual | 4.5d | 2021-09-14 A | 2021-09-20 A | 2 | 100% |  |  | 2021-09-14 | 2021-09-21 | 4.38d |  |  | Информация [1 информация]; Разработчик | 36h | 36h | 12,600 | 12,600 |
| 4 | 2 | **Подготовка проекта** |  | 66d | 2021-09-22 A | 2021-12-22 A | 1 | 100% |  |  | 2021-09-22 | 2021-10-19 | 20d |  |  |  | 651.6h | 651.6h | 2,324,734.95 | 2,324,734.95 |
| 5 | 2.1 | Разработка устава проекта | manual | 3d | 2021-09-22 A | 2021-09-24 A | 3 | 100% |  |  | 2021-09-22 | 2021-09-24 | 3d |  |  | Директор предприятия [35%]; Разработчик; Связь, интернет; Системный аналитик | 24h | 24h | 9,464.69 | 9,464.69 |
| 6 | 2.2 | Разработка технического задания | manual | 8d | 2021-09-27 A | 2021-10-07 A | 5 | 100% |  |  | 2021-09-27 | 2021-10-06 | 8d |  |  | Директор предприятия [35%]; Разработчик; Связь, интернет; Техническое оборудование | 48h | 48h | 769,428.68 | 769,428.68 |
| 7 | 2.3 | Разработка календарного плана | manual | 3d | 2021-10-07 A | 2021-10-12 | 6 | 100% |  | 2021-10-11 | 2021-10-07 | 2021-10-12 | 4d |  |  | Директор предприятия [35%]; Разработчик; Связь, интернет; Системный аналитик | 24h | 24h | 9,464.69 | 9,464.69 |
| 8 | 2.4 | Разработка требований к организации проекта | manual | 5d | 2021-10-13 A | 2021-10-19 A | 7 | 100% |  |  | 2021-10-13 | 2021-10-19 | 5d |  |  | Директор предприятия [35%]; Разработчик; Системный аналитик | 48h | 48h | 15,928.89 | 15,928.89 |
| 9 | 2.5 | Разработать программу испытаний в соответствии с ГОСТ 34.603-92 | manual | 47d | 2021-10-19 A | 2021-12-22 A | 8 | 100% |  |  |  |  |  |  |  | Директор предприятия [35%]; ПО: 1С: УИД [1 руб.]; ПО: 1С: УПП [1 руб.]; Разработчик; Техническое оборудование; Системный аналитик | 507.6h | 507.6h | 1,520,448 | 1,520,448 |
| 10 | 3 | **Установка конфигуратора 1С** |  | 5d | 2021-10-20 A | 2021-10-26 | 4 | 99% | 0d |  | 2021-10-20 | 2021-10-22 | 3d | 0d |  |  | 48h | 48h | 1,488,940 | 1,488,940 |
| 11 | 3.1 | Контроль и управление инженерно-технологическими процессами, ресурсами и средствами | manual | 5d | 2021-10-20 A | 2021-10-26 | 9 | 99% | 0d |  |  |  |  |  |  | Персонал предпрития [20%]; ПО: 1С: УИД [1 руб.]; CAD-система [1 руб.]; Системный аналитик | 8h | 8h | 121,440 | 121,440 |
| 12 | 3.2 | Установка платформы 1С, УПП, платформы под УИД | manual | 5d | 2021-10-20 A | 2021-10-26 A | 11 | 100% |  |  | 2021-10-20 | 2021-10-22 | 3d |  |  | ПО: 1С: УИД [1 руб.]; ПО: 1С: УПП [1 руб.]; Разработчик; Связь, интернет; Техническое оборудование | 40h | 40h | 1,367,500 | 1,367,500 |
| 13 | 4 | **Разработка технического проекта** |  | 23d | 2021-10-27 A | 2021-11-26 | 10 | 99% | 0.34d |  | 2021-10-25 | 2021-11-23 | 22d | 0d |  |  | 128h | 123.2h | 2,300,564.44 | 2,299,724.44 |
| 14 | 4.1 | Разработка функциональной, организационной структуры платформы | manual | 7d | 2021-10-27 A | 2021-11-04 A | 12 | 100% |  |  | 2021-10-25 | 2021-11-02 | 7d |  |  | Разработчик; Связь, интернет; Техническое оборудование; Системный аналитик | 36h | 36h | 766,100 | 766,100 |
| 15 | 4.2 | Разработка решений по техническому и программному обеспечению | manual | 12d | 2021-11-05 A | 2021-11-22 A | 14 | 100% |  |  | 2021-11-03 | 2021-11-18 | 12d |  |  | Разработчик; Техническое оборудование | 52h | 52h | 770,200 | 770,200 |
| 16 | 4.3 | Разработка плана реализации | manual | 3d | 2021-11-23 A | 2021-11-25 A | 15 | 100% |  |  | 2021-11-19 | 2021-11-23 | 3d |  |  | Директор предприятия [35%]; Разработчик; Связь, интернет; Техническое оборудование | 24h | 24h | 761,464.44 | 761,464.44 |
| 17 | 4.4 | Разработать регламент сопровождения системы | manual | 1d | 2021-11-26 A | 2021-11-26 | 16 | 70% | 0.3d |  |  |  |  |  |  | Информация [1 информация]; Разработчик; Системный аналитик | 16h | 11.2h | 2,800 | 1,960 |
| 18 | 5 | **Разработка модуля для платформы 1С: УИД** |  | 19d | 2021-11-26 A | 2021-12-22 | 13 | 99% | 0d |  | 2021-11-24 | 2021-12-20 | 19d | 0d |  |  | 89h | 89h | 1,537,470 | 1,537,470 |
| 19 | 5.1 | Программирование на платформе 1С, конфигурацию УИД – САПР | manual | 15d | 2021-11-26 A | 2021-12-16 | 16 | 99% | 0d |  | 2021-11-24 | 2021-12-14 | 15d |  |  | Разработчик; Связь, интернет; Техническое оборудование; Тестировщик; CAD-система [1 руб.] | 65h | 65h | 776,250 | 776,250 |
| 20 | 5.2 | Тестирование взаимосвязи между системами | manual | 4d | 2021-12-17 A | 2021-12-22 A | 19 | 100% |  |  | 2021-12-15 | 2021-12-20 | 4d |  |  | Персонал предпрития [20%]; Разработчик; Связь, интернет; Техническое оборудование; Тестировщик | 24h | 24h | 761,220 | 761,220 |
| 21 | 6 | **Интеграция 1С: УИД в 1С: УПП** |  | 27d | 2021-12-23 | 2022-01-28 | 18 |  |  |  | 2021-12-21 | 2021-12-28 | 6d | 0d |  |  | 551.2h |  | 6,894,624.39 |  |
| 22 | 6.1 | Внедрение разработанных модулей в главный объект ИС | manual | 6d | 2021-12-23 | 2021-12-30 | 20 |  |  |  | 2021-12-21 | 2021-12-28 | 6d |  |  | Аренда офиса [1 руб/мес.]; Директор предприятия [35%]; Персонал предпрития [20%]; ПО: 1С: УИД [1 руб.]; ПО: 1С: УПП [1 руб.]; Разработчик; Связь, интернет; Техническое оборудование | 48h |  | 1,418,488.39 |  |
| 23 | 6.2 | Тестирование взаимосвязи между системами. | manual | 4d | 2021-12-31 | 2022-01-05 | 22 |  |  |  |  |  |  |  |  | Аренда офиса [1 руб/мес.]; Персонал предпрития [20%]; ПО: 1С: УИД [1 руб.]; ПО: 1С: УПП [1 руб.]; Разработчик; Связь, интернет; Техническое оборудование | 38.4h |  | 1,415,852 |  |
| 24 | 6.3 | Завершение проекта |  | 17d | 2022-01-06 | 2022-01-28 |  |  |  |  | 2021-12-29 | 2022-01-04 | 5d | 0d | start no earlier than 2022-01-06 | Аренда офиса [1 руб/мес.]; Директор предприятия [35%]; Информация [1 информация]; Персонал предпрития [20%]; ПО: 1С: УИД [1 руб.]; ПО: 1С: УПП [1 руб.]; Разработчик; Связь, интернет; Техническое оборудование | 210.8h |  | 1,469,324 |  |
| 25 | 6.4 | Загрузка информации в базу данных и проверка ее | manual | 3d | 2022-01-06 | 2022-01-10 | 23 |  |  |  |  |  |  |  |  | ПО: 1С: УИД [1 руб.]; ПО: 1С: УПП [1 руб.]; Разработчик; Тестировщик | 48h |  | 608,400 |  |
| 26 | 6.5 | комплексная наладка всех средств системы | manual | 4d | 2022-01-11 | 2022-01-14 | 25 |  |  |  |  |  |  |  |  | ПО: 1С: УИД [1 руб.]; ПО: 1С: УПП [1 руб.]; Разработчик; Тестировщик; Техническое оборудование | 64h |  | 1,363,200 |  |
| 27 | 6.6 | Обучение персонала | manual | 5d | 2022-01-17 | 2022-01-21 | 26 |  |  |  |  |  |  |  |  | Директор предприятия [35%]; Персонал предпрития [20%]; ПО: 1С: УИД [1 руб.]; ПО: 1С: УПП [1 руб.]; Разработчик; Системный аналитик; Тестировщик | 142h |  | 619,360 |  |
